# IVI CPG + STDP

Schedule from GanttProject, 2023-07-21 to 2024-01-09.
IVI
Holidays every year on 01-01, 01-02, 01-07, 02-15, 02-16, 05-01, 05-02, 11-11

## Calendars

- Project calendar: Mon-Fri working; Sat-Sun off.

## Schedule

| ID | WBS | Task | Type | Duration | Start | Finish | Predecessors |
| --- | --- | --- | --- | --- | --- | --- | --- |
| 1 | 1 | **Computational infrastructure setup** |  | 3d | 2023-07-21 | 2023-07-25 |  |
| 2 | 1.1 | Neuron GPU |  | 3d | 2023-07-21 | 2023-07-25 |  |
| 3 | 1.2 | NEST GPU |  | 3d | 2023-07-21 | 2023-07-25 |  |
| 4 | 1.3 | select NEST / NEURON | milestone | 0d | 2023-07-26 | 2023-07-26 | 3 |
| 5 | 2 | **CPG + STDP modeling** |  | 50d | 2023-07-26 | 2023-10-03 |  |
| 6 | 2.1 | brian2->N migration |  | 10d | 2023-07-26 | 2023-08-08 | 2 |
| 7 | 2.2 | Izhi -> HH migration |  | 10d | 2023-07-26 | 2023-08-08 | 2 |
| 8 | 2.3 | F-E + STDP |  | 10d | 2023-08-09 | 2023-08-22 | 7 |
| 9 | 2.4 | Testing F-E |  | 5d | 2023-08-23 | 2023-08-29 | 8 |
| 10 | 2.5 | BS + STDP projections |  | 10d | 2023-08-30 | 2023-09-12 | 8, 9 |
| 11 | 2.6 | Testing BS projections |  | 5d | 2023-09-13 | 2023-09-19 | 9, 10 |
| 12 | 2.7 | L-R + STDP |  | 5d | 2023-09-20 | 2023-09-26 | 8, 11 |
| 13 | 2.8 | Testing L-R |  | 5d | 2023-09-27 | 2023-10-03 | 12 |
| 14 | 2.9 | Tested CPG + STDP | milestone | 0d | 2023-10-04 | 2023-10-04 | 13 |
| 15 | 3 | How many neurons can we have? | milestone | 0d | 2023-10-04 | 2023-10-04 | 5 |
| 16 | 4 | **Hardware infrastructure setup** |  | 20d | 2023-08-15 | 2023-09-11 |  |
| 17 | 4.1 | order soler station |  | 20d | 2023-08-15 | 2023-09-11 |  |
| 18 | 4.2 | order oscilloscope |  | 10d | 2023-08-15 | 2023-08-28 |  |
| 19 | 4.3 | harware infrastructure ready | milestone | 0d | 2023-08-29 | 2023-08-29 | 18 |
| 20 | 5 | **Hardware** |  | 70d | 2023-10-02 | 2024-01-09 |  |
| 21 | 5.1 | **Design** |  | 40d | 2023-10-02 | 2023-11-24 |  |
| 22 | 5.1.1 | PCBs design of on leakage |  | 15d | 2023-10-02 | 2023-10-20 |  |
| 23 | 5.1.2 | PCBs desgin learning feedback |  | 20d | 2023-10-23 | 2023-11-17 | 22 |
| 24 | 5.1.3 | PCB design of refractory period |  | 5d | 2023-11-20 | 2023-11-24 | 23 |

| ID | WBS | Task | Duration | Start | Finish | Predecessors |
| --- | --- | --- | --- | --- | --- | --- |
| 25 | 5.2 | **Implementation** | 30d | 2023-11-27 | 2024-01-09 | 21 |
| 26 | 5.2.1 | Order PCBs | 15d | 2023-11-27 | 2023-12-15 |  |
| 27 | 5.2.2 | Assemble PCBs | 15d | 2023-12-18 | 2024-01-09 | 26 |
