# memristive CPG

Schedule from GanttProject, 2023-12-01 to 2025-07-02, baseline: rainy.
Holidays every year on 01-01, 01-02, 01-03, 01-04, 01-05, 01-07, 02-15, 02-16, 05-01, 05-02, 11-11, 12-20, 12-21, 12-22, 12-23, 12-24, 12-25, 12-26, 12-27, 12-28, 12-29, 12-30, 12-31

## Calendars

- Project calendar: Mon-Fri working; Sat-Sun off. Exceptions (off unless hours are given): 2024-02-10 (Chinese NY).

## Schedule

| ID | WBS | Task | Type | Duration | Start | Finish | Predecessors | Complete | Baseline start | Baseline finish | Baseline duration |
| --- | --- | --- | --- | --- | --- | --- | --- | --- | --- | --- | --- |
| 1 | 1 | **B-model** |  | 40d | 2023-12-01 | 2024-02-13 |  | 11% | 2023-12-01 | 2024-03-05 | 53d |
| 2 | 1.1 | Ia STDP fix |  | 15d | 2023-12-01 | 2024-01-09 |  | 40% | 2023-12-01 | 2024-01-09 | 15d |
| 3 | 1.2 | Ia->F, E STDP |  | 3d | 2024-01-10 | 2024-01-12 | 2 | 10% | 2024-01-02 | 2024-01-10 | 3d |
| 4 | 1.3 | BS->F, E STDP |  | 2d | 2024-01-10 | 2024-01-11 | 2 | 10% | 2024-01-05 | 2024-01-09 | 2d |
| 5 | 1.4 | Cut STDP fix |  | 7d | 2024-01-15 | 2024-01-23 | 3, 4 | 1% | 2023-12-22 | 2024-01-16 | 7d |
| 6 | 1.5 | + 2nd leg |  | 5d | 2023-12-18 | 2024-01-10 |  |  | 2024-01-09 | 2024-01-10 | 2d |
| 7 | 1.6 | Commisural Projections |  | 2d | 2024-01-11 | 2024-01-12 | 6 |  | 2024-01-11 | 2024-01-12 | 2d |
| 8 | 1.7 | Balance 2 legs |  | 2d | 2024-01-15 | 2024-01-16 | 7 |  | 2024-01-15 | 2024-01-16 | 2d |
| 9 | 1.8 | Debug 2 legs |  | 10d | 2024-01-17 | 2024-01-30 | 8 |  | 2024-01-17 | 2024-01-30 | 10d |
| 10 | 1.9 | Debug STDP complete model |  | 10d | 2024-01-31 | 2024-02-13 | 9 |  | 2024-01-31 | 2024-02-13 | 10d |
| 11 | 1.10 | Complete B-model | milestone | 0d | 2024-02-14 | 2024-02-14 | 10 |  | 2024-02-14 | 2024-02-14 | 0d |
| 12 | 2 | **Memristive devices** |  | 95d | 2023-12-06 | 2024-05-09 |  | 2% |  |  |  |
| 13 | 2.1 | buy silver |  | 15d | 2023-12-06 | 2024-01-12 |  | 15% |  |  |  |
| 14 | 2.2 | fabricate 1 mem |  | 5d | 2024-01-15 | 2024-01-19 | 13 |  |  |  |  |
| 15 | 2.3 | test 1 mem |  | 10d | 2024-01-22 | 2024-02-02 | 14 |  |  |  |  |
| 16 | 2.4 | fabricate 8 mem E |  | 10d | 2024-02-05 | 2024-02-20 | 15 |  |  |  |  |
| 17 | 2.5 | test 8 mem E |  | 10d | 2024-02-21 | 2024-03-05 | 16 |  |  |  |  |
| 18 | 2.6 | fubricate + 12 mems |  | 10d | 2024-03-06 | 2024-03-19 | 17 |  |  |  |  |
| 19 | 2.7 | 20 mems test F+E |  | 10d | 2024-03-20 | 2024-04-02 | 18 |  |  |  |  |
| 20 | 2.8 | fubricate 40 mems |  | 10d | 2024-04-03 | 2024-04-16 | 19 |  |  |  |  |
| 21 | 2.9 | test 40 mems |  | 15d | 2024-04-17 | 2024-05-09 | 20 |  |  |  |  |
| 22 | 2.10 | 40 mems (2 legs) | milestone | 0d | 2024-05-10 | 2024-05-10 | 21 |  |  |  |  |
| 23 | 3 | **Mem neurons** |  | 130d | 2023-12-01 | 2024-06-24 |  | 12% |  |  |  |
| 24 | 3.1 | negotiate mem 1 parameters |  | 1d | 2023-12-01 | 2023-12-01 |  | 100% |  |  |  |
| 25 | 3.2 | test task |  | 10d | 2023-12-04 | 2023-12-15 | 24 | 100% |  |  |  |
| 26 | 3.3 | negotiate mem 2 parameters |  | 1d | 2024-01-22 | 2024-01-22 | 14, 24, 25 |  |  |  |  |
| 27 | 3.4 | Rework mem neurons schematic |  | 22d | 2023-12-04 | 2024-01-19 | 24 | 30% |  |  |  |
| 28 | 3.5 | Design PCB E neurons |  | 7d | 2024-01-23 | 2024-01-31 | 26, 27 |  |  |  |  |
| 29 | 3.6 | Design PCB F neurons |  | 7d | 2024-02-01 | 2024-02-09 | 28 |  |  |  |  |
| 30 | 3.7 | Design PCB InE, InF |  | 5d | 2024-02-12 | 2024-02-20 | 29 |  |  |  |  |
| 31 | 3.8 | Design PCB 2nd leg |  | 10d | 2024-02-21 | 2024-03-05 | 30 |  |  |  |  |
| 32 | 3.9 | Simulation |  | 2d | 2024-03-06 | 2024-03-07 | 31 |  |  |  |  |
| 33 | 3.10 | Order 1st PCBs |  | 10d | 2024-03-08 | 2024-03-21 | 32 |  |  |  |  |
| 34 | 3.11 | Delivery 1st PCBs |  | 15d | 2024-03-22 | 2024-04-11 | 33 |  |  |  |  |
| 35 | 3.12 | Solder 1st PCBs |  | 20d | 2024-04-12 | 2024-05-13 | 34 |  |  |  |  |
| 36 | 3.13 | Redesign PCBs |  | 5d | 2024-05-14 | 2024-05-20 | 35 |  |  |  |  |
| 37 | 3.14 | Order 2nd PCBs |  | 10d | 2024-05-21 | 2024-06-03 | 36 |  |  |  |  |
| 38 | 3.15 | Solder 2nd PCBs |  | 10d | 2024-06-04 | 2024-06-17 | 37 |  |  |  |  |
| 39 | 3.16 | Test 2nd PCBs |  | 5d | 2024-06-18 | 2024-06-24 | 38 |  |  |  |  |
| 40 | 3.17 | Mem neurons | milestone | 0d | 2024-06-25 | 2024-06-25 | 39 |  |  |  |  |

| ID | WBS | Task | Type | Duration | Start | Finish | Predecessors |
| --- | --- | --- | --- | --- | --- | --- | --- |
| 41 | 4 | **Neurons+mems integration** |  | 65d | 2025-02-12 | 2025-05-15 | 1, 12, 23 |
| 42 | 4.1 | deliver mem neurons |  | 20d | 2025-02-12 | 2025-03-11 |  |
| 43 | 4.2 | integrate 1 neuron + 1 mem |  | 5d | 2025-03-12 | 2025-03-18 | 42 |
| 44 | 4.3 | test integration 1n + 1m |  | 5d | 2025-03-19 | 2025-03-25 | 43 |
| 45 | 4.4 | integrate 1 RG 4 neurons |  | 5d | 2025-03-26 | 2025-04-01 | 44 |
| 46 | 4.5 | test integrated RG |  | 10d | 2025-04-02 | 2025-04-15 | 45 |
| 47 | 4.6 | integrate 1 leg |  | 5d | 2025-04-16 | 2025-04-22 | 46 |
| 48 | 4.7 | test 1 leg |  | 5d | 2025-04-23 | 2025-04-29 | 47 |
| 49 | 4.8 | integrate 2 legs |  | 5d | 2025-04-30 | 2025-05-08 | 48 |
| 50 | 4.9 | test 2 legs |  | 5d | 2025-05-09 | 2025-05-15 | 49 |
| 51 | 4.10 | integrated mem CPG | milestone | 0d | 2025-05-16 | 2025-05-16 | 50 |
| 52 | 5 | **Rat validation** |  | 33d | 2025-05-16 | 2025-07-01 | 41 |
| 53 | 5.1 | deliver mem CPG |  | 20d | 2025-05-16 | 2025-06-12 |  |
| 54 | 5.2 | test mem CPG |  | 5d | 2025-06-13 | 2025-06-19 | 53 |
| 55 | 5.3 | integrate outs F+E |  | 3d | 2025-06-20 | 2025-06-24 | 54 |
| 56 | 5.4 | validate outs on rat |  | 5d | 2025-06-25 | 2025-07-01 | 55 |
| 57 | 5.5 | validated mem CPG | milestone | 0d | 2025-07-02 | 2025-07-02 | 56 |
