# mem spinal cord project

Schedule from GanttProject, 2023-11-27 to 2024-05-16, baseline: sunny.
Holidays every year on 01-01, 01-02, 01-07, 02-15, 02-16, 05-01, 05-02, 11-11

## Calendars

- Project calendar: Mon-Fri working; Sat-Sun off.

## Schedule

| ID | WBS | Task | Type | Duration | Start | Finish | Predecessors | Complete | Baseline start | Baseline finish | Baseline duration |
| --- | --- | --- | --- | --- | --- | --- | --- | --- | --- | --- | --- |
| 1 | 1 | **B-model develpment** |  | 37d | 2023-11-27 | 2024-01-18 |  | 2% | 2023-11-27 | 2024-01-18 | 37d |
| 2 | 1.1 | Ia STDP fix |  | 10d | 2023-11-27 | 2023-12-08 |  | 10% | 2023-11-27 | 2023-12-08 | 10d |
| 3 | 1.2 | Cut STDP fix |  | 5d | 2023-12-11 | 2023-12-15 | 2 |  | 2023-12-11 | 2023-12-15 | 5d |
| 4 | 1.3 | BS->F STDP |  | 2d | 2023-12-18 | 2023-12-19 | 3 |  | 2023-12-18 | 2023-12-19 | 2d |
| 5 | 1.4 | BS->E STDP |  | 1d | 2023-12-20 | 2023-12-20 | 4 |  | 2023-12-20 | 2023-12-20 | 1d |
| 6 | 1.5 | Add 2nd leg |  | 1d | 2023-12-21 | 2023-12-21 | 3, 4, 5 |  | 2023-12-21 | 2023-12-21 | 1d |
| 7 | 1.6 | Commisural projections |  | 1d | 2023-12-22 | 2023-12-22 | 6 |  | 2023-12-22 | 2023-12-22 | 1d |
| 8 | 1.7 | Balance legs |  | 2d | 2023-12-25 | 2023-12-26 | 7 |  | 2023-12-25 | 2023-12-26 | 2d |
| 9 | 1.8 | Debug 2 legs |  | 5d | 2023-12-27 | 2024-01-04 | 8 |  | 2023-12-27 | 2024-01-04 | 5d |
| 10 | 1.9 | Debug STDP complete model |  | 10d | 2024-01-05 | 2024-01-18 | 9 |  | 2024-01-05 | 2024-01-18 | 10d |
| 11 | 1.10 | Complete B-model | milestone | 0d | 2024-01-19 | 2024-01-19 | 10 |  | 2024-01-19 | 2024-01-19 | 0d |
| 12 | 2 | **Memristors** |  | 57d | 2023-11-27 | 2024-02-19 |  |  | 2023-11-27 | 2024-02-19 | 57d |
| 13 | 2.1 | 1 memristor |  | 2d | 2023-11-27 | 2023-11-28 |  |  | 2023-11-27 | 2023-11-28 | 2d |
| 14 | 2.2 | 1 memristor test |  | 5d | 2023-11-29 | 2023-12-05 | 13 |  | 2023-11-29 | 2023-12-05 | 5d |
| 15 | 2.3 | 8 mem fubrication (E) |  | 5d | 2023-12-06 | 2023-12-12 | 14 |  | 2023-12-06 | 2023-12-12 | 5d |
| 16 | 2.4 | 8 mem test (E) |  | 10d | 2023-12-13 | 2023-12-26 | 15 |  | 2023-12-13 | 2023-12-26 | 10d |
| 17 | 2.5 | + 12 mem fubrication |  | 5d | 2023-12-27 | 2024-01-04 | 16 |  | 2023-12-27 | 2024-01-04 | 5d |
| 18 | 2.6 | 20 mem test (F+E) |  | 10d | 2024-01-05 | 2024-01-18 | 17 |  | 2024-01-05 | 2024-01-18 | 10d |
| 19 | 2.7 | 40 mems fubrication |  | 5d | 2024-01-19 | 2024-01-25 | 18 |  | 2024-01-19 | 2024-01-25 | 5d |
| 20 | 2.8 | 40 mems test |  | 15d | 2024-01-26 | 2024-02-19 | 19 |  | 2024-01-26 | 2024-02-19 | 15d |
| 21 | 2.9 | 40 mems (2 legs) | milestone | 0d | 2024-02-20 | 2024-02-20 | 20 |  | 2024-02-20 | 2024-02-20 | 0d |
| 22 | 3 | **Mem neurons** |  | 67d | 2023-11-27 | 2024-03-04 |  |  | 2023-11-27 | 2024-03-04 | 67d |
| 23 | 3.1 | negotiate parameters of mem neurons |  | 2d | 2023-11-27 | 2023-11-28 |  |  | 2023-11-27 | 2023-11-28 | 2d |
| 24 | 3.2 | Rework mem neuron sch |  | 10d | 2023-11-29 | 2023-12-12 | 23 |  | 2023-11-29 | 2023-12-12 | 10d |
| 25 | 3.3 | Design E neurons |  | 5d | 2023-12-13 | 2023-12-19 | 24 |  | 2023-12-13 | 2023-12-19 | 5d |
| 26 | 3.4 | Design F neurons |  | 5d | 2023-12-20 | 2023-12-26 | 25 |  | 2023-12-20 | 2023-12-26 | 5d |
| 27 | 3.5 | Design InE, InF |  | 5d | 2023-12-27 | 2024-01-04 | 26 |  | 2023-12-27 | 2024-01-04 | 5d |
| 28 | 3.6 | Design 2nd leg |  | 10d | 2024-01-05 | 2024-01-18 | 27 |  | 2024-01-05 | 2024-01-18 | 10d |
| 29 | 3.7 | Order PCBs |  | 5d | 2024-01-19 | 2024-01-25 | 28 |  | 2024-01-19 | 2024-01-25 | 5d |
| 30 | 3.8 | Deliver PCBs |  | 10d | 2024-01-26 | 2024-02-08 | 29 |  | 2024-01-26 | 2024-02-08 | 10d |
| 31 | 3.9 | Assemble PCBs |  | 15d | 2024-02-09 | 2024-03-04 | 29, 30 |  | 2024-02-09 | 2024-03-04 | 15d |
| 32 | 3.10 | Completed mem neurons | milestone | 0d | 2024-03-05 | 2024-03-05 | 31 |  | 2024-03-05 | 2024-03-05 | 0d |

| ID | WBS | Task | Type | Duration | Start | Finish | Predecessors | Baseline start | Baseline finish | Baseline duration |
| --- | --- | --- | --- | --- | --- | --- | --- | --- | --- | --- |
| 33 | 4 | **Neurons+mems integration** |  | 34d | 2024-03-05 | 2024-04-19 | 1, 12, 22 | 2024-03-05 | 2024-04-19 | 34d |
| 34 | 4.1 | deliver mem neurons |  | 10d | 2024-03-05 | 2024-03-18 |  | 2024-03-05 | 2024-03-18 | 10d |
| 35 | 4.2 | integrate 1 neuron 1 mem |  | 3d | 2024-03-19 | 2024-03-21 | 34 | 2024-03-19 | 2024-03-21 | 3d |
| 36 | 4.3 | integrate 1 RG |  | 5d | 2024-03-22 | 2024-03-28 | 35 | 2024-03-22 | 2024-03-28 | 5d |
| 37 | 4.4 | test integrated RG |  | 5d | 2024-03-29 | 2024-04-04 | 36 | 2024-03-29 | 2024-04-04 | 5d |
| 38 | 4.5 | integrate 1 leg |  | 3d | 2024-04-05 | 2024-04-09 | 37 | 2024-04-05 | 2024-04-09 | 3d |
| 39 | 4.6 | test 1 leg |  | 2d | 2024-04-10 | 2024-04-11 | 38 | 2024-04-10 | 2024-04-11 | 2d |
| 40 | 4.7 | integrate 2 legs |  | 3d | 2024-04-12 | 2024-04-16 | 39 | 2024-04-12 | 2024-04-16 | 3d |
| 41 | 4.8 | test 2 legs |  | 3d | 2024-04-17 | 2024-04-19 | 40 | 2024-04-17 | 2024-04-19 | 3d |
| 42 | 4.9 | integrated 2 legs | milestone | 0d | 2024-04-22 | 2024-04-22 | 41 | 2024-04-22 | 2024-04-22 | 0d |
| 43 | 5 | **Rat validation** |  | 16d | 2024-04-22 | 2024-05-15 | 33 | 2024-04-22 | 2024-05-15 | 16d |
| 44 | 5.1 | deliver mem cpg |  | 10d | 2024-04-22 | 2024-05-07 |  | 2024-04-22 | 2024-05-07 | 10d |
| 45 | 5.2 | test mem cpg |  | 3d | 2024-05-08 | 2024-05-10 | 44 | 2024-05-08 | 2024-05-10 | 3d |
| 46 | 5.3 | integrate outs (F+E) |  | 1d | 2024-05-13 | 2024-05-13 | 45 | 2024-05-13 | 2024-05-13 | 1d |
| 47 | 5.4 | validate outs on rat |  | 2d | 2024-05-14 | 2024-05-15 | 46 | 2024-05-14 | 2024-05-15 | 2d |
| 48 | 5.5 | validated mem cpg | milestone | 0d | 2024-05-16 | 2024-05-16 | 47 | 2024-05-16 | 2024-05-16 | 0d |
